# Salesforce_Phase3

Schedule from MS Project, 2013-05-13 to 2013-06-25.

## Calendars

- Standard: Mon-Fri 08:00-12:00, 13:00-17:00; Sat-Sun off. Exceptions (off unless hours are given): 2013-05-13 08:30-12:00, 13:30-18:00, 2013-05-21 to 2013-05-22 08:30-12:00, 13:30-18:00.

## Resources

| Resource |
| --- |
| 1 |
| All team |
| Phi Ho |
| Si Huynh |
| Ha Nguyen |
| Vinh |
| Phi Ho & Vinh |
| Hiến & Hiếu |
| Ha Nguyen & Long |
| Hien & Hieu |
| Ha & Long |
| Phi & Vinh |
| All team & Chi (content) |
| Long & Chi (content) |

## Schedule

| ID | WBS | Task | Duration | Start | Finish | Predecessors | Total slack | Free slack | Constraint | Resources | Work |
| --- | --- | --- | --- | --- | --- | --- | --- | --- | --- | --- | --- |
| 1 | 1 | **TreMoCoi_Project_Phase1** | 6.5d? | 2013-06-03 | 2013-06-11 |  | 0d |  |  |  | 112h |
| 2 | 1.1 | Study about Foundation front-end framework | 1d | 2013-06-03 | 2013-06-03 |  | 0d |  | start no earlier than 2013-06-03 | All team | 8h |
| 3 | 1.2 | Analysis and summary the business | 2d | 2013-06-03 | 2013-06-04 |  | 4.5d | 0d | start no earlier than 2013-06-03 | Ha Nguyen | 16h |
| 4 | 1.3 | Home: Header, Sidebar, Footer (normal: the last section) | 0.5d | 2013-06-04 | 2013-06-04 | 2 | 4.5d | 0d |  | Phi Ho & Vinh | 4h |
| 5 | 1.4 | Home: Center, Footer (content section) | 1.5d | 2013-06-04 | 2013-06-05 | 2 | 0d |  |  | Hiến & Hiếu | 12h |
| 6 | 1.5 | News: by categories | 1d | 2013-06-04 | 2013-06-05 | 4 | 4.5d | 0d |  | Phi Ho & Vinh | 8h |
| 7 | 1.6 | Login, Registration | 1d? | 2013-06-05 | 2013-06-06 | 5 | 0d |  |  | Hien & Hieu | 8h |
| 8 | 1.7 | Adoption form | 2d | 2013-06-05 | 2013-06-06 | 3 | 4.5d |  |  | Ha & Long | 16h |
| 9 | 1.8 | Orphans information | 1.5d | 2013-06-05 | 2013-06-06 | 6 | 4.5d |  |  | Phi Ho & Vinh | 12h |
| 10 | 1.9 | Social Network: Share, Like | 0.5d | 2013-06-06 | 2013-06-06 | 7 | 4.5d |  |  | Hien & Hieu | 4h |
| 12 | 1.10 | Test and Fixbug | 3d | 2013-06-06 | 2013-06-11 | 7 | 0d |  |  | All team | 24h |
| 14 | 2 | **TreMoCoi_Project_Phase2** | 5d? | 2013-06-11 | 2013-06-18 |  | 0d |  |  |  | 40h |
| 15 | 2.1 | Merge new design | 2d | 2013-06-11 | 2013-06-13 | 12 | 0d |  |  | All team | 16h |
| 16 | 2.2 | Test and Fixbug | 1d? | 2013-06-13 | 2013-06-14 | 15 | 0d |  |  | All team | 8h |
| 17 | 2.3 | Merge to Production | 2d | 2013-06-14 | 2013-06-18 | 16 | 0d |  |  | All team | 16h |
| 20 | 3 | **TreMoCoi_Project_Phase3** | 32d? | 2013-05-13 | 2013-06-25 |  | 0d |  |  |  | 80h |
| 21 | 3.1 | Mobile theme | 2d | 2013-06-18 | 2013-06-20 | 17 | 0d |  |  | Hien & Hieu | 16h |
| 22 | 3.2 | Form Tuyen dung | 1.5d | 2013-06-18 | 2013-06-19 | 17 | 3.5d | 0d |  | Ha & Long | 12h |
| 23 | 3.3 | Import from excel to table Tre mo coi | 2d | 2013-06-18 | 2013-06-20 | 17 | 3d | 0d |  | Phi & Vinh | 16h |
| 24 | 3.4 | Happy ending | 0.5d | 2013-06-20 | 2013-06-20 | 22 | 3.5d |  |  | Long & Chi (content) | 4h |
| 25 | 3.5 | User's trace | 0.5d | 2013-06-20 | 2013-06-20 | 23 | 3d |  |  | Phi & Vinh | 4h |
| 26 | 3.6 | User's children | 0.5d | 2013-06-20 | 2013-06-20 | 21 | 0d |  |  | Hien & Hieu | 4h |
| 28 | 3.7 | Test and Fixbug | 1d? | 2013-06-21 | 2013-06-21 | 26, 23 | 0d |  |  | All team | 8h |
| 29 | 3.8 | Merge to Production | 2d | 2013-06-24 | 2013-06-25 | 28 | 0d |  |  | All team | 16h |
| 35 | 3.9 | Children's history | 1d? | 2013-05-13 | 2013-05-13 |  | 31d |  |  |  |  |
| 50 | 3.10 | Note: Resource name by Newbie in WP | 1d? | 2013-05-13 | 2013-05-13 |  | 31d |  |  |  |  |

Notes:
- 1: Text1: Note: Bản layout chưa design
- 4: Text1: 1, 2, 3, 4, 5, 6, 10, 11, 12, 13, 16
- 5: Text1: 7, 8, 9, 14, 15
- 6: Text1: Danh sách trai tre (bai viet lien quan); Bai viet, hinh anh, video, am nhac ve tre mo coi, hoan canh kho khan. Những tấm lòng vàng;4. Đăng thông tin trẻ em bị lạc, Hoặc tìm người thân lên, About (Gioi thieu)
- 7: Text1: Normal, FB, Twitter: Login = lightbox; Registration: Normal
- 8: Text1: Form đăng ký nhận con nuôi; Search and send Email kết quả
- 9: Text1: Form nhập thông tin trẻ mồ côi: Tên bé, ngay sinh, ngay nhan, giới tính, hinh anh bé (User (cá nhân hoặc tổ chức) or Guest form: New table?
- 10: Text1: Chuc nang chia se bai viet len cac trang mang xa hoi : facebook de moi nguoi co the nhanh chong gui cac thong tin tu website cua minh cho ban be ho.
- 14: Text1: Merge new design
- 20: Text1: Add expand functions
- 22: Text1: Form đăng tuyển dụng, send email ứng viên phù hợp toi nguoi dang tin
- 24: Text1: Thông tin 1 gđ nhận con nuôi và họ sống hạnh phúc
- 25: Text1: Show lai thong tin cho user về những nhu cầu họ đã đăng
- 26: Text1: Show thông tin những đứa trẻ mà user đã đăng
- 35: Text1: 1 bảng history lưu thông tin cuộc sống trạng thái của trẻ
